# پروژه قطعه سازی

Schedule from MS Project, 2024-09-25 to 2024-12-15.

## Calendars

- Standard: Mon-Thu 08:00-12:00, 13:00-17:00; Fri off; Sat-Sun 08:00-12:00, 13:00-17:00.

## Schedule

| ID | WBS | Task | Type | Duration | Start | Finish | Predecessors | Total slack | Free slack | Deadline |
| --- | --- | --- | --- | --- | --- | --- | --- | --- | --- | --- |
| 1 | 1 | **طراحی** |  | 29d | 2024-09-25 | 2024-10-28 |  | 0d |  |  |
| 2 | 1.1 | **تهیه مدل کلی** |  | 8d | 2024-09-25 | 2024-10-03 |  | 0d |  |  |
| 3 | 1.1.1 | شروع فاز ۱ | milestone | 0d | 2024-09-25 | 2024-09-25 |  | 0d |  |  |
| 4 | 1.1.2 | اخذ مشخصات کلی |  | 3d | 2024-09-25 | 2024-09-28 | 3 | 0d |  |  |
| 5 | 1.1.3 | تهیه طرح شماتیک دستی |  | 4d | 2024-09-29 | 2024-10-02 | 4 | 0d |  |  |
| 6 | 1.1.4 | اخذ تاییدیه اولیه |  | 1d | 2024-10-03 | 2024-10-03 | 5 | 0d |  |  |
| 7 | 1.2 | **طراحی و شبیه سازی** |  | 21d | 2024-10-05 | 2024-10-28 | 2 | 0d |  |  |
| 8 | 1.2.1 | **طراحی بدنه** |  | 13d | 2024-10-05 | 2024-10-19 |  | 0d |  |  |
| 9 | 1.2.1.1 | طراحی کلی بدنه |  | 5d | 2024-10-05 | 2024-10-09 |  | 0d |  |  |
| 10 | 1.2.1.2 | اخذ تاییدیه |  | 2d | 2024-10-10 | 2024-10-12 | 9 | 0d |  | 2024-10-14 |
| 11 | 1.2.1.3 | طراحی جزئییات و رندرینگ |  | 6d | 2024-10-13 | 2024-10-19 | 10 | 0d |  |  |
| 12 | 1.2.2 | **طراحی اجزا** |  | 11d | 2024-10-13 | 2024-10-24 |  | 3d |  |  |
| 13 | 1.2.2.1 | طراحی اجزا فلزی |  | 3d | 2024-10-13 | 2024-10-15 | 10 | 3d | 0d |  |
| 14 | 1.2.2.2 | طراحی اجزا پلاستیکی |  | 5d | 2024-10-15 | 2024-10-20 | 13SS+2d | 5d |  |  |
| 15 | 1.2.2.3 | طراحی مدارات الکترونیکی |  | 8d | 2024-10-16 | 2024-10-24 | 13 | 3d |  |  |
| 16 | 1.2.3 | **انجام تست های شبیه سازی** |  | 8d | 2024-10-20 | 2024-10-28 |  | 0d |  |  |
| 17 | 1.2.3.1 | شبیه سازی فشار و حرارت بدنه |  | 3d | 2024-10-20 | 2024-10-22 | 11 | 0d |  |  |
| 18 | 1.2.3.2 | شبیه سازی فشارو حرارت اجزا فلزی |  | 3d | 2024-10-23 | 2024-10-26 | 17, 13 | 0d |  |  |
| 19 | 1.2.3.3 | شبیه سازی فشار و حرارت اجزا پلاستیکی |  | 2d | 2024-10-27 | 2024-10-28 | 17, 14, 18 | 0d |  |  |
| 20 | 1.2.3.4 | پایان فاز ۱ | milestone | 0d | 2024-10-28 | 2024-10-28 | 19 | 0d |  |  |
| 21 | 2 | **تهیه ملزومات** |  | 8d | 2024-10-29 | 2024-11-06 | 1 | 0d |  |  |
| 22 | 2.1 | **تهیه قطعات الکترونیکی** |  | 7d | 2024-10-29 | 2024-11-05 |  | 1d |  |  |
| 23 | 2.1.1 | تهیه لیست |  | 2d | 2024-10-29 | 2024-10-30 |  | 1d | 0d |  |
| 24 | 2.1.2 | استعلام |  | 1d | 2024-10-31 | 2024-10-31 | 23 | 1d | 0d |  |
| 25 | 2.1.3 | خرید |  | 1d | 2024-11-05 | 2024-11-05 | 24FS+3d | 1d |  |  |

| ID | WBS | Task | Duration | Start | Finish | Predecessors | Total slack | Free slack |
| --- | --- | --- | --- | --- | --- | --- | --- | --- |
| 26 | 2.2 | **تهیه قطعات فلزی** | 8d | 2024-10-29 | 2024-11-06 |  | 0d |  |
| 27 | 2.2.1 | تهیه لیست | 2d | 2024-10-29 | 2024-10-30 |  | 0d |  |
| 28 | 2.2.2 | استعلام | 1d | 2024-10-31 | 2024-10-31 | 27 | 0d |  |
| 29 | 2.2.3 | خرید | 1d | 2024-11-05 | 2024-11-05 | 28FS+3d | 0d |  |
| 30 | 2.2.4 | انتقال | 1d | 2024-11-06 | 2024-11-06 | 29 | 0d |  |
| 31 | 3 | **ساخت** | 33d | 2024-11-06 | 2024-12-15 | 21 | 0d |  |
| 32 | 3.1 | **ساخت قطعات فلزی** | 22d | 2024-11-06 | 2024-12-02 |  | 0d |  |
| 33 | 3.1.1 | قالب سازی | 15d | 2024-11-07 | 2024-11-24 |  | 0d |  |
| 34 | 3.1.2 | سرد شدن | 2ed | 2024-11-06 | 2024-11-08 |  | 73.88d |  |
| 35 | 3.1.3 | ریخته گری | 2d | 2024-11-25 | 2024-11-26 | 33 | 0d |  |
| 36 | 3.1.4 | تراشکاری | 3d | 2024-11-27 | 2024-11-30 | 35 | 0d |  |
| 37 | 3.1.5 | سوراخ کاری و قلاویز | 2d | 2024-12-01 | 2024-12-02 | 36 | 0d |  |
| 38 | 3.2 | **ساخت قطعات پلاستیکی** | 33d | 2024-11-07 | 2024-12-15 |  | 0d |  |
| 39 | 3.2.1 | قالب سازی | 10d | 2024-11-07 | 2024-11-18 |  | 18d | 0d |
| 40 | 3.2.2 | تزریق پلاستیک | 3d | 2024-11-19 | 2024-11-21 | 39 | 18d | 0d |
| 41 | 3.2.3 | تراشکاری و سوراخ کاری | 2d | 2024-11-23 | 2024-11-24 | 40 | 18d |  |
| 42 | 3.2.4 | **مونتاژ نهایی** | 11d | 2024-12-03 | 2024-12-15 | 32 | 0d |  |
| 43 | 3.2.4.1 | سوار کردن قطعات فلزی روی بدنه | 4d | 2024-12-03 | 2024-12-07 |  | 0d |  |
| 44 | 3.2.4.2 | سوار کردن قطعات پلاستیکی روی بدنه | 2d | 2024-12-08 | 2024-12-09 | 43 | 0d |  |
| 45 | 3.2.4.3 | نصب قطعات الکترونیکی | 3d | 2024-12-10 | 2024-12-12 | 44 | 0d |  |
| 46 | 3.2.4.4 | تست مکانیکی | 1d | 2024-12-14 | 2024-12-14 | 45 | 0d |  |
| 47 | 3.2.4.5 | تست اولیه | 1d | 2024-12-15 | 2024-12-15 | 46 | 0d |  |
